# 项目准备

Schedule from a web Gantt chart, 2025-05-20 to 2025-05-20.
Saturdays and Sundays are off

## Schedule

| ID | WBS | Task | Duration | Start | Finish |
| --- | --- | --- | --- | --- | --- |
| 2 | 1 | 项目团队组建 | 1d | 2025-05-20 | 2025-05-20 |
